# 高风险管控平台建设

Schedule from a web Gantt chart, 2024-03-01 to 2024-10-08.
Every day is a working day

## Schedule

| ID | WBS | Task | Duration | Start | Finish | Predecessors | Complete | inPeople | Status |
| --- | --- | --- | --- | --- | --- | --- | --- | --- | --- |
| 2 | 1 | **高风险规则库建设** | 222d | 2024-03-01 | 2024-10-08 |  | 74% |  |  |
| 3 | 1.1 | 规则库门户通用脚手架 | 42d | 2024-03-01 | 2024-04-11 |  | 100% | 何水浪、汪家杰 | done |
| 4 | 1.2 | 高风险规则拦截接口 | 63d | 2024-04-12 | 2024-06-13 | 3 | 100% | 何水浪、汪家杰 | done |
| 5 | 1.3 | 高危规则动态配置 | 28d | 2024-06-14 | 2024-07-11 | 4 | 100% | 陈爽、江晋杭 | done |
| 6 | 1.4 | 高危命令动态配置 | 91d | 2024-04-12 | 2024-07-11 |  |  | 陈爽、江晋杭、王鸿友 |  |
| 7 | 1.5 | 正则表达式自动生成 | 40d | 2024-04-12 | 2024-05-21 |  | 80% | 陈爽、江晋杭、王鸿友 |  |
| 8 | 1.6 | 风险规则库 - 日志模块 | 36d | 2024-03-16 | 2024-04-20 |  | 100% | 江晋杭 | done |
| 9 | 1.7 | **接口服务[三方数据导入]** | 101d | 2024-06-30 | 2024-10-08 |  | 94% |  |  |
| 10 | 1.7.1 | 对接 cmdb 资产数据 | 73d | 2024-06-30 | 2024-09-10 |  | 100% | 江晋杭 | done |
| 11 | 1.7.2 | 对接安全中心[资产账密] | 28d | 2024-09-11 | 2024-10-08 | 10 | 80% | 江晋杭 |  |
| 12 | 2 | **接入多平台工作流建设** | 112d | 2024-06-19 | 2024-10-08 |  | 53% |  |  |
| 13 | 2.1 | PC端工作流 | 59d | 2024-06-19 | 2024-08-16 |  | 100% | 江晋杭 | done |
| 14 | 2.2 | 移动端工作流UI | 53d | 2024-08-17 | 2024-10-08 | 13 |  | 何耀 | suspended |
| 15 | 3 | **高风险堡垒机建设** | 222d | 2024-03-01 | 2024-10-08 |  | 84% |  |  |
| 16 | 3.1 | **堡垒机组件部署** | 206d | 2024-03-01 | 2024-09-22 |  | 85% | 汪家杰、何水浪 |  |
| 17 | 3.1.1 | 堡垒机的资产支持批量导入 | 57d | 2024-04-12 | 2024-06-07 |  |  |  |  |
| 18 | 3.1.2 | Jumpserver Core 组件部署 | 127d | 2024-03-01 | 2024-07-05 |  | 100% |  | done |
| 19 | 3.1.3 | Koko 组件部署 | 122d | 2024-03-01 | 2024-06-30 |  | 100% |  | done |
| 20 | 3.1.4 | 远程应用机[Windows资产] | 84d | 2024-07-01 | 2024-09-22 | 19 | 100% |  | done |
| 21 | 3.2 | SSO单点登录以及添加登录短信认证 | 51d | 2024-08-06 | 2024-09-25 |  | 100% | 江晋杭 | done |
| 22 | 3.3 | 登陆日志模块 | 51d | 2024-08-06 | 2024-09-25 |  | 80% | 江晋杭 |  |
| 23 | 3.4 | **堡垒机终端组件** | 149d | 2024-05-13 | 2024-10-08 |  | 82% |  |  |
| 24 | 3.4.1 | **Koko 实现规则拦截** | 70d | 2024-05-13 | 2024-07-21 |  | 31% | 何水浪 |  |
| 25 | 3.4.1.1 | 普通高危Linux命令 | 22d | 2024-05-13 | 2024-06-03 |  | 100% |  | done |
| 26 | 3.4.1.2 | MySQL大部分的高危命令 | 33d | 2024-06-04 | 2024-07-06 | 25 |  |  |  |
| 27 | 3.4.1.3 | Shell复杂命令 | 15d | 2024-07-07 | 2024-07-21 | 26 |  |  | waiting |
| 28 | 3.4.2 | 实现接口调用加密 | 29d | 2024-05-13 | 2024-06-10 |  | 100% | 何水浪 |  |
| 29 | 3.4.3 | 实现事中审批 | 46d | 2024-06-04 | 2024-07-19 |  | 90% | 何水浪 |  |
| 30 | 3.4.4 | 附件服务器的下载 | 79d | 2024-07-22 | 2024-10-08 |  | 90% | 何水浪、江东山 |  |
| 31 | 3.4.5 | 附件服务器的上传 | 79d | 2024-07-22 | 2024-10-08 |  | 90% | 何水浪、江东山 |  |
| 32 | 3.4.6 | 固定条件+非固定条件优化拦截 | 79d | 2024-07-22 | 2024-10-08 |  | 100% | 何水浪、江东山 | done |

Notes:
- 7: 复杂的命令自动转换成正则表达式尚未完成
- 11: 电信负责人员联调正式数据
- 14: 移动端 Mobile 暂时搁置
- 16: Core 组件 Koko组件等大部分组件以及完成，一些特殊功能的组件还没完成部署
- 22: 详细的高危日志，还在等待与电信人员沟通需求
- 27: 暂时不做
- 29: OA通知尚未开始
- 30: 前端正在测试
- 31: 前端正在测试
